# UD-SOFT S.A.S

Schedule from MS Project, 2023-03-01 to 2023-07-31, status date 2023-03-23, costs in $.
Planificacion del Proyecto
UD-SOFT S.A.S
Practica #1 MS Project

## Calendars

- Estándar: Mon-Fri 09:00-13:00, 15:00-19:00; Sat-Sun 09:00-19:00. Exceptions (off unless hours are given): 2023-03-20 (Puente Festivo), 2023-04-06 to 2023-04-07 (Semana Santa), 2023-05-01 (Puente Festivo), 2023-05-22 (Puente Festivo), 2023-06-12 (Puente Festivo), 2023-06-19 (Puente Festivo), 2023-07-03 (Puente Festivo).

## Resources

| Resource | Rate |
| --- | --- |
| Analista de Sistemas | 60 |
| Especificador de Casos de Uso | 45 |
| Diseñador de Intrerfaz de Usuario | 40 |
| Arquitecto | 55 |
| Ingeniero de Casos de Uso | 50 |
| Ingeniero de Componentes | 55 |
| HW para Implementación | 5000 |
| Licencias de Software | 3500 |
| Gastos de Representación y Viáticos | 2500 |

## Schedule

| ID | WBS | Task | Duration | Start | Finish | Predecessors | Total slack | Free slack | Constraint | Resources | Work | Cost |
| --- | --- | --- | --- | --- | --- | --- | --- | --- | --- | --- | --- | --- |
| 1 | 1 | **Planeacion del proyecto UD-SOFT SAS** | 126.88d | 2023-03-01 | 2023-07-31 |  |  |  |  |  | 998.64h | 76,940.86 |
| 2 | 1.1 | **1. Proceso de Requisitos** | 29.75d | 2023-03-01 | 2023-04-05 |  | 28.46d |  |  | Gastos de Representación y Viáticos; HW para Implementación; Licencias de Software | 272h | 25,840 |
| 3 | 1.1.1 | **1.1 Analizar Problema** | 8d | 2023-03-01 | 2023-03-10 |  | 118.62d |  |  |  | 64h | 3,840 |
| 4 | 1.1.1.1 | 1.1.1 Glosario de Terminos | 1d | 2023-03-01 | 2023-03-02 |  | 118.62d | 0d |  | Analista de Sistemas | 8h | 480 |
| 5 | 1.1.1.2 | 1.1.2 Identificar Actores | 3d | 2023-03-02 | 2023-03-05 | 4 | 118.62d | 0d | start no earlier than 2023-03-02 | Analista de Sistemas | 24h | 1,440 |
| 6 | 1.1.1.3 | 1.1.3 Identificar Casos de Uso | 4d | 2023-03-05 | 2023-03-10 | 5 | 118.62d |  | start no earlier than 2023-03-05 | Analista de Sistemas | 32h | 1,920 |
| 7 | 1.1.2 | **1.2 Definición del Sistema** | 12d | 2023-03-09 | 2023-03-23 |  | 107.88d |  |  |  | 96h | 4,320 |
| 8 | 1.1.2.1 | 1.2.1 Detallar Casos de Uso | 5d | 2023-03-09 | 2023-03-14 |  | 107.88d | 0d | start no earlier than 2023-03-09 | Especificador de Casos de Uso | 40h | 1,800 |
| 9 | 1.1.2.2 | 1.2.2 Estructurar Modelo de Casos de Uso | 1d | 2023-03-14 | 2023-03-16 | 8 | 107.88d | 0d | start no earlier than 2023-03-14 | Especificador de Casos de Uso | 8h | 360 |
| 10 | 1.1.2.3 | 1.2.3 Prototipar Casos de Uso | 6d | 2023-03-16 | 2023-03-23 | 9 | 107.88d |  |  | Especificador de Casos de Uso | 48h | 2,160 |
| 11 | 1.1.3 | **1.3 Definicion de Alcance** | 1d | 2023-03-21 | 2023-03-22 |  | 96.88d |  |  |  | 8h | 440 |
| 12 | 1.1.3.1 | 1.3.1 Priorizar Casos de Uso | 1d | 2023-03-21 | 2023-03-22 |  | 96.88d | 0d | start no earlier than 2023-03-21 | Arquitecto | 8h | 440 |
| 13 | 1.1.4 | **1.4 Refinar la Definicion del Sistema** | 12d | 2023-03-22 | 2023-04-05 |  | 96.88d |  |  |  | 96h | 5,760 |
| 14 | 1.1.4.1 | 1.4.1 Refinar Casos de Uso | 5d | 2023-03-22 | 2023-03-28 | 12 | 96.88d | 0d |  | Analista de Sistemas | 40h | 2,400 |
| 15 | 1.1.4.2 | 1.4.2 Refinar Modelo de Casos de Uso | 7d | 2023-03-28 | 2023-04-05 | 14 | 96.88d |  | start no earlier than 2023-03-27 | Analista de Sistemas | 56h | 3,360 |
| 16 | 1.1.5 | 1.5 Administracion de Cambios de Requisitos | 1d | 2023-04-03 | 2023-04-04 |  | 0.34d | 0d | start no earlier than 2023-04-03 | Analista de Sistemas | 8h | 480 |
| 17 | 1.2 | **2. Proceso de Analisis** | 60d | 2023-04-04 | 2023-06-17 |  | 0.34d |  |  |  | 426.64h | 23,095.56 |
| 18 | 1.2.1 | **2.1 Análisis del Comportamiento** | 60d | 2023-04-04 | 2023-06-17 |  | 0.34d |  |  |  | 426.64h | 23,095.56 |
| 19 | 1.2.1.1 | **2.1.1 Análisis de la Arquitectura** | 7d | 2023-04-04 | 2023-04-14 |  | 0.34d |  |  |  | 56h | 3,360 |
| 20 | 1.2.1.1.1 | 2.1.1.1 Identificar Clases de Analisis | 5d | 2023-04-04 | 2023-04-12 | 16 | 0.34d | 0d |  | Arquitecto | 40h | 2,400 |
| 21 | 1.2.1.1.2 | 2.1.1.2 Identificar paquetes de analisis | 2d | 2023-04-12 | 2023-04-14 | 20 | 0.34d | 0d | start no earlier than 2023-04-09 | Arquitecto | 16h | 960 |
| 22 | 1.2.1.2 | **2.1.2 Analisis de Casos de Uso** | 30d | 2023-04-15 | 2023-05-20 |  | 0.34d |  |  |  | 186.64h | 9,517.96 |
| 23 | 1.2.1.2.1 | 2.1.2.1 Diagrama de clases de analisis | 16.67d | 2023-04-15 | 2023-05-04 | 21 | 0.34d | 0d | start no earlier than 2023-04-11 | Ingeniero de Casos de Uso | 80h | 4,026 |
| 24 | 1.2.1.2.2 | 2.1.2.2 Diagramas de Colaboracion | 13.33d | 2023-05-04 | 2023-05-20 | 23 | 0.34d | 0d | start no earlier than 2023-04-21 | Ingeniero de Casos de Uso | 106.64h | 5,491.96 |
| 25 | 1.2.1.3 | 2.1.3 Analisis de Paquetes | 8d | 2023-05-20 | 2023-05-29 | 24 | 0.34d | 0d | start no earlier than 2023-05-03 | Ingeniero de Componentes | 64h | 3,625.6 |
| 26 | 1.2.1.4 | 2.1.4 Analisis de Datos | 10d | 2023-05-29 | 2023-06-10 | 25 | 0.34d | 0d | start no earlier than 2023-05-10 | Ingeniero de Componentes | 80h | 4,532 |
| 27 | 1.2.1.5 | 2.1.5 Refinar el analisis | 5d | 2023-06-10 | 2023-06-17 | 26 | 0.34d | 0d |  | Ingeniero de Casos de Uso | 40h | 2,060 |

| ID | WBS | Task | Duration | Start | Finish | Predecessors | Total slack | Free slack | Constraint | Resources | Work | Cost |
| --- | --- | --- | --- | --- | --- | --- | --- | --- | --- | --- | --- | --- |
| 28 | 1.3 | **3. Proceso de Diseño** | 37.17d | 2023-06-17 | 2023-07-31 |  | 0.34d |  |  | Licencias de Software; HW para Implementación; Gastos de Representación y Viáticos | 300h | 28,005.3 |
| 29 | 1.3.1 | 3.1 Diseño de la Arquitectura | 8d | 2023-06-17 | 2023-06-26 | 27 | 0.34d | 0d | start no earlier than 2023-05-24 | Arquitecto | 64h | 3,625.6 |
| 30 | 1.3.2 | **3.2 Diseño de Casos de Uso** | 18d | 2023-06-26 | 2023-07-18 |  | 0.34d |  |  |  | 144h | 8,157.6 |
| 31 | 1.3.2.1 | 3.2.1 Diagramas de clases de diseño | 9d | 2023-06-26 | 2023-07-08 | 29 | 0.34d | 0d | start no earlier than 2023-06-01 | Ingeniero de Casos de Uso [50%]; Analista de Sistemas [50%] | 72h | 4,078.8 |
| 32 | 1.3.2.2 | 3.2.2 Diagramas de colaboracion | 4d | 2023-07-08 | 2023-07-12 | 31 | 0.34d | 0d | start no earlier than 2023-06-09 | Ingeniero de Casos de Uso [50%]; Analista de Sistemas [50%] | 32h | 1,812.8 |
| 33 | 1.3.2.3 | 3.2.3 Diagramas de despliegue | 3d | 2023-07-12 | 2023-07-16 | 32 | 0.34d | 0d | start no earlier than 2023-06-13 | Ingeniero de Casos de Uso [50%]; Analista de Sistemas [50%] | 24h | 1,359.6 |
| 34 | 1.3.2.4 | 3.2.4 Diagramas de estado | 2d | 2023-07-16 | 2023-07-18 | 33 | 0.34d | 0d | start no earlier than 2023-06-16 | Ingeniero de Casos de Uso [50%]; Analista de Sistemas [50%] | 16h | 906.4 |
| 35 | 1.3.3 | **3.3 Diseño de Paquetes** | 2d | 2023-07-18 | 2023-07-21 |  | 0.34d |  |  |  | 16h | 906.4 |
| 36 | 1.3.3.1 | 3.3.1 Paquetes de diseño | 2d | 2023-07-18 | 2023-07-21 | 34 | 0.34d | 0d | start no earlier than 2023-06-18 | Ingeniero de Componentes | 16h | 906.4 |
| 37 | 1.3.4 | **3.4 Diseño de Datos** | 3d | 2023-07-21 | 2023-07-23 |  | 0.34d |  |  |  | 24h | 1,236 |
| 38 | 1.3.4.1 | 3.4.1 Diseño de la BD | 3d | 2023-07-21 | 2023-07-23 | 36 | 0.34d | 0d | start no earlier than 2023-06-20 | Ingeniero de Casos de Uso | 24h | 1,236 |
| 39 | 1.3.5 | **3.5 Refinar el Diseño** | 6.5d | 2023-07-16 | 2023-07-23 |  |  |  |  |  | 52h | 3,079.7 |
| 40 | 1.3.5.1 | 3.5.1 Refinar diagramas de clases de diseño | 1.5d | 2023-07-23 | 2023-07-26 | 38 | 0.34d | 0d | start no earlier than 2023-06-23 | Ingeniero de Casos de Uso [50%]; Analista de Sistemas [50%] | 12h | 710.7 |
| 41 | 1.3.5.2 | 3.5.2 Refinar diagramas de colaboracion | 1.67d | 2023-07-26 | 2023-07-28 | 40 | 0.34d | 0d | start no earlier than 2023-06-25 | Ingeniero de Casos de Uso; Analista de Sistemas | 16h | 947.6 |
| 42 | 1.3.5.3 | 3.5.3 Refinar diagramas de despliegue | 0.5d | 2023-07-28 | 2023-07-29 | 41 | 0.34d | 0d | finish no earlier than 2023-06-25 | Ingeniero de Casos de Uso [50%]; Analista de Sistemas [50%] | 4h | 236.9 |
| 43 | 1.3.5.4 | 3.5.4 Refinar diagramas de estado | 1d | 2023-07-29 | 2023-07-29 | 42 | 0.34d | 0d | start no earlier than 2023-06-27 | Ingeniero de Casos de Uso [50%]; Analista de Sistemas [50%] | 8h | 473.8 |
| 44 | 1.3.5.5 | 3.5.5 Refinar BD | 1d | 2023-07-29 | 2023-07-30 | 43 | 0.34d | 0d |  | Ingeniero de Casos de Uso [50%]; Analista de Sistemas [50%] | 8h | 473.8 |
| 45 | 1.3.5.6 | 3.5.6 Refinar paquetes de diseño | 0.5d | 2023-07-30 | 2023-07-31 | 44 | 0.34d |  | start no earlier than 2023-06-29 | Ingeniero de Componentes [50%]; Analista de Sistemas [50%] | 4h | 236.9 |
